# 物联网关项目规划

Schedule from MS Project, 2017-08-07 to 2017-12-29, A marks actual dates.

## Calendars

- Standard: Mon-Fri 08:00-12:00, 13:00-17:00; Sat-Sun off.

## Resources

| Resource |
| --- |
| 樊明捷 |
| 鲍乐乐 |
| 王中亚 |

## Schedule

| ID | WBS | Task | Type | Duration | Start | Finish | Predecessors | Complete | Remaining | Actual start | Total slack | Free slack | Constraint |
| --- | --- | --- | --- | --- | --- | --- | --- | --- | --- | --- | --- | --- | --- |
| 1 | 1 | **网关硬件开发** |  | 35d | 2017-08-07 A | 2017-09-22 |  | 38% | 21.73d |  |  |  |  |
| 2 | 1.1 | 需求细化-PRD确定 |  | 5d | 2017-08-07 A | 2017-08-11 A |  | 100% |  |  |  |  |  |
| 3 | 1.2 | 功能选型/建库/概要设计 |  | 10d | 2017-08-14 A | 2017-08-25 A | 2 | 100% |  |  |  |  |  |
| 4 | 1.3 | 原理图/详细设计 |  | 5d | 2017-08-28 A | 2017-09-01 | 3 | 95% | 0.25d |  | 3d | 0d |  |
| 5 | 1.4 | PCB设计 |  | 5d | 2017-09-04 A | 2017-09-08 | 4 | 60% | 2d |  | 0d |  |  |
| 6 | 1.5 | 制板贴片 |  | 10d | 2017-09-11 | 2017-09-22 | 5 |  |  |  | 0d |  |  |
| 7 | 1.6 | 软硬件基本功能联调 |  | 25d | 2017-09-25 | 2017-10-27 | 6 |  |  |  | 45d |  | finish no earlier than 2017-10-27 |
| 8 | 2 | **网关软件开发** |  | 60d | 2017-08-07 A | 2017-10-27 |  | 33% | 39.93d |  |  |  |  |
| 9 | 2.1 | 接口的分配与设计 |  | 5d | 2017-08-07 A | 2017-08-11 A |  | 100% |  |  |  |  |  |
| 10 | 2.2 | **代码设计** |  | 35d | 2017-08-18 | 2017-10-06 |  | 51% | 17.03d | 2017-08-14 |  |  |  |
| 11 | 2.2.1 | 对外接口及PC侧软件需求 | manual | 10d | 2017-08-14 A | 2017-08-25 | 9 | 90% | 1d |  |  |  |  |
| 12 | 2.2.2 | 传感器接口 | manual | 5d | 2017-08-28 A | 2017-09-01 | 11 | 50% | 2.5d |  |  |  |  |
| 13 | 2.2.3 | 系统状态及功能 | manual | 2d | 2017-09-04 A | 2017-09-05 | 12 | 40% | 1.2d |  |  |  |  |
| 14 | 2.2.4 | 存储功能 | manual | 3d | 2017-09-06 A | 2017-09-08 | 13 | 70% | 0.9d |  |  |  |  |
| 15 | 2.2.5 | 主业务功能 | manual | 10d | 2017-09-11 A | 2017-09-22 | 14 | 10% | 9d |  |  |  |  |
| 16 | 2.3 | 软硬件基本功能联调 |  | 25d | 2017-09-25 | 2017-10-27 | 6 |  |  |  | 45d |  | start no earlier than 2017-09-25 |
| 17 | 2.4 | 原型机主要功能实现 | milestone, manual | 1d | 2017-10-30 | 2017-10-30 |  |  |  |  |  |  |  |
| 18 | 3 | **结构开发** |  | 25d | 2017-10-30 | 2017-12-01 |  |  |  |  |  |  |  |
| 19 | 3.1 | 需求分析 |  | 5d | 2017-10-31 | 2017-11-06 | 17 |  |  |  | 19d | 0d |  |
| 20 | 3.2 | 外包设计协调 |  | 10d | 2017-11-17 | 2017-11-30 | 19 |  |  |  | 21d |  | finish no earlier than 2017-11-30 |
| 21 | 4 | **网关系统测试和软件优化** |  | 45d | 2017-10-30 | 2017-12-29 |  |  |  |  |  |  |  |
| 22 | 4.1 | 治具和设计 | manual | 10d | 2017-10-31 | 2017-11-13 | 17 |  |  |  |  |  |  |
| 23 | 4.2 | 系统测试和代码优化 | manual | 30d | 2017-10-31 | 2017-12-11 | 17 |  |  |  |  |  |  |
| 24 | 4.3 | PCB板优化（如果需要） | manual | 20d | 2017-10-31 | 2017-11-27 | 17 |  |  |  |  |  |  |
| 25 | 5 | 小批量（出货测试，包装及交付） | manual | 14d | 2017-12-12 | 2017-12-29 | 23 |  |  |  |  |  |  |
| 26 | 6 | 小批量交付 | milestone, manual | 0d | 2017-12-29 | 2017-12-29 |  |  |  |  |  |  |  |

Notes:
- 1: 这是摘要任务。使用摘要任务以帮助您在节中组织项目。
- 2: 1. 基于《新版物联网网关需求分析20170727》的需求输入 / 2. 整理《PRD 物联网网关产品需求文档20170811》 完成系统功能，硬件，固件和结构件的需求确定 / 3. 初步确定相关规范要求和产品寿命
- 3: 2017.08.12 / 1. 完成约90%器件的选型，电源芯片，接插件等还在进一步评估 / 2. 完成约60%器件的建库，主要器件的建库完成，尚余一些二，三级管，电容等器件 / 3. 完成主要器件的sourcing和价格比对，并提交采购申请 《物联网网关主要部件采购20170809》 / 4. 初步完成检测和控制电路的设计（并导出专利技术交底书） / 4.1 PID-一种安全型继电器控制电路 / 4.2 PID-一种宽动态交直流状态检测电路 / 2017.08.18/ 1. 完成90%概要设计 （接下来需要仿真优化参数和做FEMA） / 2. 插件，电源芯片确定 / 3. 90%库完成 / 4. 主要部件已经申请样片和淘宝采购（刘育处立创还需要继续追） / 5. 采购的事情对进度产生影响，目前可控，后续需要做相应调整 / 6. 确认了外壳和第二轮评估布局尺寸 / 7. 初步建立3D模型，和吴总，徐军总确认接口和整体效果 / 2017.08.25/ 1. 完成原理图设计 / 2. 完成器件的选型和建库 / 3. 完成供应商的筛选
- 4: 这是里程碑任务。将任务工期设置为 0d 以标记项目中的事件。 / 20170818/ 1. 初步的原理图已经建立并导出PCB / 20170825/ 1. 完成原理图的设计 / 2. 初查过一轮引脚定义 / 3. 完成检测电路，驱动电路和电流电压转换电路的仿真，修正参数 / 4. 第二轮采购料表准备 / 5. 还需要第二轮细查和DFM
- 5: 2017.08.18 / 1. 初步的原理图已经建立并导出PCB / 2017.08.25/ 1. 布局完成 / 2. 开始layout，计划下周末9.2号出图，9月16号完成贴片
- 6: 2017.08.25 / 1. 准备计划提前一周
- 9: 1. 初步完成MCU接口的定义和分配 《物联网网关MCU接口定义与分配201708071329》 / 2. 开始规划接口的代码设计
- 11: 2017.08.18/ 驱动部分（完成, 待测试） / 1. 以太网 （完成, 待测试） / 2. FLash （部分完成） / 3. IO（完成, 待测试）/ 4. AD/DA （完成, 待测试） / 5. RS2323/485 （完成, 待测试）/ 6. GPRS（在写） / 2017.08.25/ 1. 测试待应用开发时进行
- 12: 2017.08.18/ 1. 目前已经完成输出驱动开发 / 2. 目前已经部分完成输入驱动开发（捕获还在开发中） / 3. 目前AD/DA驱动已经开发 / 2017.08.25 / 1. 测试待系统应用开发时进行
- 13: 2017.08.18 / 1. 状态灯驱动 / 2. 按键驱动 / 3. 电池和供电检测
- 14: 2017.08.18 / 1. 已经完成基本的Flash驱动 / 2017.08.25/ 1. SO文件的读取操作开发中，预计还要3天时间
- 15: 2017.08 / 1. 后期操作系统换Free RTOS， Uc OS
- 17: 1. 硬件支持除扩展功能之外的其他所有功能/ 2. 软件实现基本功能实现
- 19: 在其旁边带有图钉的任务为手动计划任务。当您不想让 Project 移动任务时请使用它们。如果您尚未获得所有信息，您也可以在工期、开始和完成字段输入任意文本或将其保留为空。
